# Gant_v1

Schedule from MS Project, 2013-04-08 to 2013-06-05.
Hewlett-Packard

## Calendars

- PSCalendar: Mon-Sat 08:00-12:00, 13:00-17:00; Sun off.

## Resources

| Resource |
| --- |
| Carla Machado |
| David João |
| Filipe Brandão |
| João Girão |
| João Martins |
| Mário Oliveira |
| Rui Ganhoto |

## Schedule

| ID | WBS | Task | Type | Duration | Start | Finish | Predecessors | Total slack | Free slack | Constraint | Resources | Work |
| --- | --- | --- | --- | --- | --- | --- | --- | --- | --- | --- | --- | --- |
| 2 | 1 | SRS REVIEW | milestone, manual | 0d | 2013-05-06 | 2013-05-06 |  |  |  |  |  |  |
| 3 | 2 | **Requirements Analysis** |  | 26.58d | 2013-04-08 | 2013-05-08 |  | 2d |  |  |  | 924.08h |
| 4 | 2.1 | Elicitation (brainstorming) + Use Case Diagram (draft) |  | 1.86d | 2013-04-08 | 2013-04-09 |  | 2d | 0d |  | Carla Machado; David João; Filipe Brandão; João Girão; João Martins; Mário Oliveira; Rui Ganhoto | 104.16h |
| 5 | 2.2 | Use Cases definition + Mockups + Business Rules |  | 4.4d | 2013-04-09 | 2013-04-16 | 4 | 43.6d |  |  | Filipe Brandão; Rui Ganhoto; Carla Machado | 105.6h |
| 6 | 2.3 | Risk meeting |  | 0.75d | 2013-04-22 | 2013-04-22 |  | 38.11d |  | start no earlier than 2013-04-20 | Carla Machado; David João; Filipe Brandão; João Girão; João Martins; Mário Oliveira; Rui Ganhoto | 42h |
| 7 | 2.4 | Requirements Definition + SRS production |  | 10d | 2013-04-11 | 2013-04-25 | 4 | 0d |  | start no earlier than 2013-04-11 | Mário Oliveira; João Girão | 160h |
| 8 | 2.5 | Acceptance tests planning |  | 6.5d | 2013-04-16 | 2013-04-25 | 4 | 35.5d |  | start no earlier than 2013-04-16 | João Martins; David João | 104h |
| 9 | 2.6 | **SRS Inspection** |  | 10.72d | 2013-04-25 | 2013-05-08 | 7 | 0d |  |  |  | 328.32h |
| 10 | 2.6.1 | Planning + Preparation |  | 1.86d | 2013-04-25 | 2013-04-29 | 7 | 0d |  |  | Carla Machado; David João; Filipe Brandão; João Girão; João Martins; Mário Oliveira; Rui Ganhoto | 104.16h |
| 11 | 2.6.2 | Meeting |  | 2.86d | 2013-04-29 | 2013-05-02 | 10 | 0d |  |  | Carla Machado; David João; Filipe Brandão; João Girão; João Martins; Mário Oliveira; Rui Ganhoto | 160.16h |
| 12 | 2.6.3 | Rework + Followup |  | 4d | 2013-05-02 | 2013-05-08 | 11 | 0d |  |  | Mário Oliveira; João Girão | 64h |
| 13 | 2.7 | Reestimate |  | 2d | 2013-05-02 | 2013-05-06 | 11 | 26.28d |  |  | Carla Machado; Rui Ganhoto; Filipe Brandão; João Martins; David João | 80h |
| 14 | 3 | CODE REVIEW | milestone, manual | 0d | 2013-05-29 | 2013-05-29 |  |  |  |  |  |  |
| 15 | 4 | **Development** |  | 27.72d | 2013-04-25 | 2013-05-28 | 7 | 6.36d |  |  |  | 856.48h |
| 16 | 4.1 | **Database** |  | 4.36d | 2013-04-25 | 2013-05-01 |  | 6.36d |  |  |  | 128.16h |
| 17 | 4.1.1 | Architecture definition (ER diagram) |  | 1.5d | 2013-04-25 | 2013-04-29 | 7 | 6.36d | 0d |  | João Martins; Filipe Brandão | 24h |
| 18 | 4.1.2 | Walkthrough |  | 1.86d | 2013-04-29 | 2013-05-01 | 17 | 6.36d |  |  | Carla Machado; David João; Filipe Brandão; João Girão; João Martins; Mário Oliveira; Rui Ganhoto | 104.16h |
| 19 | 4.2 | **Coding** |  | 17d | 2013-05-08 | 2013-05-28 | 12 | 0d |  |  |  | 728.32h |
| 20 | 4.2.1 | Database Module Implementation |  | 5d | 2013-05-08 | 2013-05-15 | 18 | 0d |  | start no earlier than 2013-05-07 | Rui Ganhoto | 40h |
| 21 | 4.2.2 | **Adding tasks** |  | 7d | 2013-05-08 | 2013-05-16 |  | 7.28d | 0d |  |  | 40h |
| 22 | 4.2.2.1 | Adding tasks - UI |  | 1d | 2013-05-08 | 2013-05-09 |  | 8.28d | 0d |  | David João | 8h |
| 23 | 4.2.2.2 | Adding tasks - Functionality |  | 3d | 2013-05-09 | 2013-05-14 | 22 | 8.28d | 1d |  | David João | 24h |
| 24 | 4.2.2.3 | Adding tasks - Integration |  | 1d | 2013-05-15 | 2013-05-16 | 20, 23 | 7.28d |  |  | David João | 8h |
| 25 | 4.2.3 | **Show tasks details** |  | 7d | 2013-05-08 | 2013-05-16 |  | 17.28d |  |  |  | 40h |
| 26 | 4.2.3.1 | Show tasks details - UI |  | 1d | 2013-05-08 | 2013-05-09 |  | 18.28d | 0d |  | João Girão | 8h |
| 27 | 4.2.3.2 | Show tasks details - Functionality |  | 3d | 2013-05-09 | 2013-05-14 | 26 | 18.28d | 1d |  | João Girão | 24h |
| 28 | 4.2.3.3 | Show tasks details - Integration |  | 1d | 2013-05-15 | 2013-05-16 | 20, 27 | 17.28d |  |  | João Girão | 8h |

| ID | WBS | Task | Type | Duration | Start | Finish | Predecessors | Total slack | Free slack | Constraint | Resources | Work |
| --- | --- | --- | --- | --- | --- | --- | --- | --- | --- | --- | --- | --- |
| 29 | 4.2.4 | **Show tasks listing** |  | 7d | 2013-05-08 | 2013-05-16 |  | 17.28d |  |  |  | 40h |
| 30 | 4.2.4.1 | Show tasks listing - UI |  | 1d | 2013-05-08 | 2013-05-09 |  | 18.28d | 0d |  | Mário Oliveira | 8h |
| 31 | 4.2.4.2 | Show tasks listing - Functionality |  | 3d | 2013-05-09 | 2013-05-14 | 30 | 18.28d | 1d |  | Mário Oliveira | 24h |
| 32 | 4.2.4.3 | Show tasks listing - Integration |  | 1d | 2013-05-15 | 2013-05-16 | 20, 31 | 17.28d |  |  | Mário Oliveira | 8h |
| 33 | 4.2.5 | **Inactivity Alerts** |  | 10d | 2013-05-16 | 2013-05-28 | 21 | 7.28d |  |  |  | 128h |
| 34 | 4.2.5.1 | Inactivity Alerts (detection) |  | 8d | 2013-05-16 | 2013-05-28 |  | 7.28d |  | start no earlier than 2013-05-07 | João Martins | 64h |
| 35 | 4.2.5.2 | **Inactivity alerts (user reaction)** |  | 10d | 2013-05-16 | 2013-05-28 |  | 7.28d |  |  |  | 64h |
| 36 | 4.2.5.2.1 | Inactivity alerts (user reaction)- UI |  | 1d | 2013-05-16 | 2013-05-17 |  | 7.28d | 0d |  | Mário Oliveira | 8h |
| 37 | 4.2.5.2.2 | Inactivity alerts (user reaction) - Functionality |  | 6d | 2013-05-17 | 2013-05-27 | 36 | 7.28d | 0d |  | Mário Oliveira | 48h |
| 38 | 4.2.5.2.3 | Inactivity alerts (user reaction) - Integration |  | 1d | 2013-05-27 | 2013-05-28 | 20, 37 | 7.28d |  |  | Mário Oliveira | 8h |
| 39 | 4.2.6 | **Edit and Delete task** |  | 6d | 2013-05-16 | 2013-05-23 | 21 | 11.28d |  |  |  | 40h |
| 40 | 4.2.6.1 | Edit and Delete task - UI |  | 1d | 2013-05-16 | 2013-05-17 |  | 11.28d | 0d |  | Rui Ganhoto | 8h |
| 41 | 4.2.6.2 | Edit and Delete task - Functionality |  | 3d | 2013-05-17 | 2013-05-22 | 40 | 11.28d | 0d |  | Rui Ganhoto | 24h |
| 42 | 4.2.6.3 | Edit and Delete task - Integration |  | 1d | 2013-05-22 | 2013-05-23 | 41 | 11.28d |  |  | Rui Ganhoto | 8h |
| 43 | 4.2.7 | Export app data |  | 8d | 2013-05-15 | 2013-05-27 | 20 | 8.28d |  |  | João Girão | 64h |
| 44 | 4.2.8 | Timing individual tasks |  | 5d | 2013-05-15 | 2013-05-22 | 20 | 12.28d |  |  | David João | 40h |
| 45 | 4.2.9 | **Code Inspection** |  | 10.72d | 2013-05-15 | 2013-05-28 | 20 | 0d |  |  |  | 296.32h |
| 46 | 4.2.9.1 | Planning + Preparation |  | 1.86d | 2013-05-15 | 2013-05-17 |  | 0d |  |  | Carla Machado; David João; Filipe Brandão; João Girão; João Martins; Mário Oliveira; Rui Ganhoto | 104.16h |
| 47 | 4.2.9.2 | Meeting |  | 2.86d | 2013-05-17 | 2013-05-22 | 46 | 0d |  |  | Carla Machado; David João; Filipe Brandão; João Girão; João Martins; Mário Oliveira; Rui Ganhoto | 160.16h |
| 48 | 4.2.9.3 | Rework + Followup |  | 4d | 2013-05-22 | 2013-05-28 | 47 | 0d |  |  | Rui Ganhoto | 32h |
| 49 | 5 | ACCEPTANCE | milestone, manual | 0d | 2013-06-03 | 2013-06-03 |  |  |  |  |  |  |
| 50 | 6 | **Acceptance Tests** |  | 7.56d | 2013-05-28 | 2013-06-05 | 45 | 0d |  |  |  | 260h |
| 51 | 6.1 | Execution |  | 6.5d | 2013-05-28 | 2013-06-05 |  | 0d |  |  | Carla Machado; Filipe Brandão | 104h |
| 52 | 6.2 | Fixing |  | 6.5d | 2013-05-28 | 2013-06-05 |  | 0.06d |  |  | David João; Mário Oliveira; João Girão | 156h |
